# 舍里app1

Schedule from MS Project, 2009-11-16 to 2019-06-28, costs in ¥.
Microsoft

## Calendars

- 标准: Mon-Fri 08:00-12:00, 13:00-17:00; Sat-Sun off.

## Resources

| Resource | Rate |
| --- | --- |
| 项目经理 | 50 |
| 技术专家 | 25 |
| 质量专家 | 25 |
| 需求专家 | 25 |
| UI专家 | 25 |
| 材料 |  |
| 间接成本 |  |
| 前端程序员1 | 25 |
| 前端程序员2 | 25 |
| 后端程序员1 | 25 |
| 后端程序员2 | 25 |
| 测试员1 | 25 |
| 测试员2 | 25 |

## Schedule

| ID | WBS | Task | Type | Duration | Start | Finish | Predecessors | Total slack | Resources | Work | Cost |
| --- | --- | --- | --- | --- | --- | --- | --- | --- | --- | --- | --- |
| 1 | 1 | **启动** |  | 3d | 2019-03-01 | 2019-03-05 |  |  | 间接成本 [0.1%]; 项目经理 | 144h | 5,200 |
| 2 | 1.1 | 组建核心团队 | manual | 1d | 2019-03-01 | 2019-03-01 |  |  | 项目经理; UI专家; 技术专家; 需求专家; 质量专家 | 40h | 1,200 |
| 3 | 1.2 | 干系人分析 | manual | 1d | 2019-03-01 | 2019-03-01 |  |  | 需求专家; 项目经理 | 16h | 600 |
| 4 | 1.3 | 里程碑计划 | manual | 1d | 2019-03-01 | 2019-03-01 |  |  | 项目经理; 需求专家 | 16h | 600 |
| 5 | 1.4 | 制定项目章程 | manual | 1d | 2019-03-04 | 2019-03-04 | 2, 3, 4 |  | 项目经理 | 8h | 400 |
| 6 | 1.5 | 项目启动大会 | manual | 1d | 2019-03-05 | 2019-03-05 | 5 |  | UI专家; 技术专家; 项目经理; 需求专家; 质量专家 | 40h | 1,200 |
| 7 | 2 | **规划** |  | 16d | 2019-03-06 | 2019-03-27 |  |  | 间接成本 [0.1%]; 项目经理 | 5344h | 158,600 |
| 8 | 2.1 | **规划范围** |  | 5d | 2019-03-06 | 2019-03-12 |  |  |  | 48h | 1,800 |
| 9 | 2.1.1 | 制定需求说明书 | manual | 1d | 2019-03-06 | 2019-03-06 | 6 |  | 需求专家 | 8h | 200 |
| 10 | 2.1.2 | 界面设计 | manual | 1d | 2019-03-07 | 2019-03-07 | 9 |  | UI专家 | 8h | 200 |
| 11 | 2.1.3 | 详细设计说明书 | manual | 1d | 2019-03-07 | 2019-03-07 | 9 |  | 技术专家 | 8h | 200 |
| 12 | 2.1.4 | 范围说明书 | manual | 1d | 2019-03-08 | 2019-03-08 | 9 |  | 项目经理 | 8h | 400 |
| 13 | 2.1.5 | 创建WBS | manual | 1d | 2019-03-11 | 2019-03-11 | 10, 11, 12 |  | 项目经理 | 8h | 400 |
| 14 | 2.1.6 | 形成范围基准 |  | 1d | 2019-03-12 | 2019-03-12 | 13 | 0d | 项目经理 | 8h | 400 |
| 15 | 2.2 | **规划时间** |  | 5d | 2019-03-13 | 2019-03-19 |  |  |  | 240h | 10,600 |
| 16 | 2.2.1 | 排序工作包顺序 | manual | 1d | 2019-03-13 | 2019-03-13 | 14 |  | 项目经理 | 8h | 400 |
| 17 | 2.2.2 | 估算资源 | manual | 1d | 2019-03-14 | 2019-03-15 | 16 |  | 项目经理 | 8h | 400 |
| 18 | 2.2.3 | 估算持续时间 | manual | 1d | 2019-03-15 | 2019-03-18 | 17 |  | 项目经理 | 8h | 400 |
| 19 | 2.2.4 | 制定进度计划 | manual | 1d | 2019-03-18 | 2019-03-19 | 18 |  | 项目经理 | 8h | 400 |
| 20 | 2.2.5 | 形成进度基准 | manual | 1d | 2019-03-19 | 2019-03-19 | 19 |  | 项目经理 | 8h | 400 |
| 21 | 2.2.6 | **规划成本** |  | 2d | 2019-03-20 | 2019-03-21 |  |  | 项目经理 | 32h | 1,600 |
| 22 | 2.2.6.1 | 项目成本估算 | manual | 1d | 2019-03-20 | 2019-03-20 |  |  | 项目经理 | 8h | 400 |
| 23 | 2.2.6.2 | 项目预算 | manual | 1d | 2019-03-21 | 2019-03-21 |  |  | 项目经理 | 8h | 400 |
| 24 | 2.2.7 | **规划质量** |  | 1d | 2019-03-22 | 2019-03-22 |  |  | 质量专家 | 24h | 600 |
| 25 | 2.2.7.1 | 制定测试计划 | manual | 1d | 2019-03-22 | 2019-03-22 |  |  | 质量专家 | 8h | 200 |
| 26 | 2.2.7.2 | 制定测试用例 | manual | 1d | 2019-03-22 | 2019-03-22 |  |  | 质量专家 | 8h | 200 |

| ID | WBS | Task | Type | Duration | Start | Finish | Total slack | Constraint | Resources | Work | Cost |
| --- | --- | --- | --- | --- | --- | --- | --- | --- | --- | --- | --- |
| 27 | 2.2.8 | **规划人力资源** |  | 1d | 2019-03-25 | 2019-03-25 |  |  | 项目经理 | 24h | 1,200 |
| 28 | 2.2.8.1 | 制定人力资源计划 | manual | 1d | 2019-03-25 | 2019-03-25 |  |  | 项目经理 | 8h | 400 |
| 29 | 2.2.8.2 | 制定人员配备管理计划 | manual | 1d | 2019-03-25 | 2019-03-25 |  |  | 项目经理 | 8h | 400 |
| 30 | 2.2.9 | **规划沟通** |  | 1d | 2019-03-26 | 2019-03-26 |  |  | 项目经理 | 16h | 800 |
| 31 | 2.2.9.1 | 制定人员配备管理计划 | manual | 1d | 2019-03-26 | 2019-03-26 |  |  | 项目经理 | 8h | 400 |
| 32 | 2.2.10 | **规划采购** |  | 1d | 2019-03-27 | 2019-03-27 |  |  | 项目经理 | 24h | 1,200 |
| 33 | 2.2.10.1 | 自制外购分析 | manual | 1d | 2019-03-27 | 2019-03-27 |  |  | 项目经理 | 8h | 400 |
| 34 | 2.2.10.2 | 制定采购文件 | manual | 1d | 2019-03-27 | 2019-03-27 |  |  | 项目经理 | 8h | 400 |
| 35 | 2.2.11 | **规划风险** |  | 2d | 2019-03-28 | 2019-03-29 |  |  | 项目经理 | 40h | 2,000 |
| 36 | 2.2.11.1 | 识别风险 | manual | 1d | 2019-03-28 | 2019-03-28 |  |  | 项目经理 | 8h | 400 |
| 37 | 2.2.11.2 | 风险分析 | manual | 1d | 2019-03-28 | 2019-03-28 |  |  | 项目经理 | 8h | 400 |
| 38 | 2.2.11.3 | 制定风险登记册 | manual | 1d | 2019-03-29 | 2019-03-29 |  |  | 项目经理 | 8h | 400 |
| 39 | 2.2.12 | 规划整合 |  | 1d | 2019-04-01 | 2019-04-01 | 74d | finish no earlier than 2019-04-01 | 项目经理; UI专家; 技术专家; 需求专家; 质量专家 | 40h | 1,200 |
| 40 | 2.3 | **执行与监控** |  | 44d | 2019-04-02 | 2019-05-31 |  |  | UI专家; 技术专家; 项目经理; 需求专家; 质量专家 | 4928h | 139,800 |
| 41 | 2.3.1 | 组建项目团队 | manual | 4d | 2019-04-02 | 2019-04-05 |  |  | UI专家; 技术专家; 项目经理; 需求专家; 质量专家 | 160h | 4,800 |
| 42 | 2.3.2 | **项目执行** |  | 35d | 2019-04-08 | 2019-05-24 |  |  | UI专家; 技术专家; 项目经理; 需求专家; 质量专家 | 3008h | 82,200 |
| 43 | 2.3.2.1 | **用户模块** |  | 5d | 2019-04-08 | 2019-04-12 |  |  | 后端程序员1; 前端程序员1; UI专家; 测试员1; 技术专家; 质量专家 | 448h | 11,200 |
| 44 | 2.3.2.1.1 | **用户注册** |  | 3d | 2019-04-08 | 2019-04-10 |  |  | 测试员1; 后端程序员1; 前端程序员1 | 104h | 2,600 |
| 45 | 2.3.2.1.1.1 | 构建用户信息的数据表 | manual | 1d | 2019-04-08 | 2019-04-08 |  |  | 后端程序员1 | 8h | 200 |
| 46 | 2.3.2.1.1.2 | 注册页面的UI设计 | manual | 1d | 2019-04-08 | 2019-04-08 |  |  | 前端程序员1 | 8h | 200 |
| 47 | 2.3.2.1.1.3 | 注册页面注册功能实现 | manual | 1d | 2019-04-09 | 2019-04-09 |  |  | 后端程序员1 | 8h | 200 |
| 48 | 2.3.2.1.1.4 | 注册功能的测试 | manual | 1d | 2019-04-10 | 2019-04-10 |  |  | 测试员1 | 8h | 200 |
| 49 | 2.3.2.1.2 | **用户登录** |  | 3d | 2019-04-08 | 2019-04-10 |  |  | 测试员1; 后端程序员1; 前端程序员1 | 104h | 2,600 |
| 50 | 2.3.2.1.2.1 | 登录页面的UI设计 | manual | 1d | 2019-04-08 | 2019-04-08 |  |  | UI专家; 前端程序员1 | 16h | 400 |
| 51 | 2.3.2.1.2.2 | 登录页面登录功能实现 | manual | 1d | 2019-04-09 | 2019-04-09 |  |  | 后端程序员1 | 8h | 200 |
| 52 | 2.3.2.1.2.3 | 登录功能的测试 | manual | 1d | 2019-04-10 | 2019-04-10 |  |  | 测试员1 | 8h | 200 |

| ID | WBS | Task | Type | Duration | Start | Finish | Resources | Work | Cost |
| --- | --- | --- | --- | --- | --- | --- | --- | --- | --- |
| 53 | 2.3.2.2 | **求助模块** |  | 5d | 2019-04-15 | 2019-04-19 | UI专家; 测试员2; 后端程序员2; 技术专家; 前端程序员2; 质量专家 | 368h | 9,200 |
| 54 | 2.3.2.2.1 | 设计求助信息的数据表 | manual | 1d | 2019-04-15 | 2019-04-15 | 后端程序员2 | 8h | 200 |
| 55 | 2.3.2.2.2 | 页面设计 | manual | 3d | 2019-04-15 | 2019-04-17 | 前端程序员2 | 24h | 600 |
| 56 | 2.3.2.2.3 | 发布求助功能 | manual | 3d | 2019-04-16 | 2019-04-18 | 后端程序员2 | 24h | 600 |
| 57 | 2.3.2.2.4 | 再编辑求助 | manual | 3d | 2019-04-16 | 2019-04-18 | 后端程序员2 | 24h | 600 |
| 58 | 2.3.2.2.5 | 解答求助 | manual | 3d | 2019-04-16 | 2019-04-18 | 后端程序员2 | 24h | 600 |
| 59 | 2.3.2.2.6 | 测试发布、解答功能 | manual | 3d | 2019-04-17 | 2019-04-19 | 测试员2 | 24h | 600 |
| 60 | 2.3.2.3 | **文章模块** |  | 5d | 2019-04-22 | 2019-04-26 | UI专家; 测试员1; 后端程序员1; 技术专家; 前端程序员1; 质量专家 | 240h | 6,000 |
| 61 | 2.3.2.3.1 | 设计文章信息的数据表 | manual | 1d | 2019-04-22 | 2019-04-22 |  |  |  |
| 62 | 2.3.2.3.2 | 页面设计 | manual | 3d | 2019-04-22 | 2019-04-24 |  |  |  |
| 63 | 2.3.2.3.3 | 发表文章 | manual | 3d | 2019-04-24 | 2019-04-26 |  |  |  |
| 64 | 2.3.2.3.4 | 再编辑文章 | manual | 3d | 2019-04-24 | 2019-04-26 |  |  |  |
| 65 | 2.3.2.3.5 | 评论文章 | manual | 3d | 2019-04-24 | 2019-04-26 |  |  |  |
| 66 | 2.3.2.3.6 | 点赞文章 | manual | 3d | 2019-04-24 | 2019-04-26 |  |  |  |
| 67 | 2.3.2.3.7 | 举报文章 | manual | 3d | 2019-04-24 | 2019-04-26 |  |  |  |
| 68 | 2.3.2.3.8 | 收藏文章 | manual | 3d | 2019-04-24 | 2019-04-26 |  |  |  |
| 69 | 2.3.2.3.9 | 测试发表、评论、点赞、收藏、举报功能 | manual | 3d | 2019-04-24 | 2019-04-26 |  |  |  |
| 70 | 2.3.2.4 | **个人中心模块** |  | 10d | 2019-04-29 | 2019-05-10 | UI专家; 测试员2; 后端程序员2; 技术专家; 前端程序员2; 质量专家 | 480h | 12,000 |
| 71 | 2.3.2.4.1 | 设计个人详细信息数据表 | manual | 1d | 2019-04-29 | 2019-04-29 |  |  |  |
| 72 | 2.3.2.4.2 | 页面设计 | manual | 2d | 2019-04-29 | 2019-04-30 |  |  |  |
| 73 | 2.3.2.4.3 | 修改个人信息 | manual | 1d | 2019-05-05 | 2019-05-05 |  |  |  |
| 74 | 2.3.2.4.4 | **我的发布** |  | 1d? | 2019-05-06 | 2019-05-07 |  |  |  |
| 75 | 2.3.2.4.4.1 | 发布的求助列表 | manual | 1d? | 2019-05-06 | 2019-05-07 |  |  |  |
| 76 | 2.3.2.4.4.2 | 发布的文章列表 | manual | 1d? | 2019-05-06 | 2019-05-07 |  |  |  |
| 77 | 2.3.2.4.4.3 | 删除文章、求助 | manual | 1d? | 2019-05-06 | 2019-05-07 |  |  |  |
| 78 | 2.3.2.4.4.4 | 文章、求助设置权限 | manual | 1d? | 2019-05-06 | 2019-05-07 |  |  |  |
| 79 | 2.3.2.4.5 | 我的收藏 | manual | 1d | 2019-05-07 | 2019-05-07 |  |  |  |
| 80 | 2.3.2.4.6 | 我的好友 | manual | 1d | 2019-05-08 | 2019-05-08 |  |  |  |

| ID | WBS | Task | Type | Duration | Start | Finish | Resources | Work | Cost |
| --- | --- | --- | --- | --- | --- | --- | --- | --- | --- |
| 81 | 2.3.2.4.7 | **选择服务** |  | 1d? | 2019-05-09 | 2019-05-10 |  |  |  |
| 82 | 2.3.2.4.7.1 | 寄存物品 | manual | 1d? | 2019-05-09 | 2019-05-10 |  |  |  |
| 83 | 2.3.2.4.7.2 | 捐赠物品 | manual | 1d? | 2019-05-09 | 2019-05-10 |  |  |  |
| 84 | 2.3.2.4.8 | 软件设置 | manual | 1d | 2019-05-10 | 2019-05-10 |  |  |  |
| 85 | 2.3.2.5 | **咨询师模块** |  | 3d | 2019-05-16 | 2019-05-20 | 测试员1; 后端程序员1; 前端程序员1 | 72h | 1,800 |
| 86 | 2.3.2.5.1 | 设计咨询师信息的数据表 | manual | 1d | 2019-05-16 | 2019-05-16 |  |  |  |
| 87 | 2.3.2.5.2 | 应聘职位功能 | manual | 1d | 2019-05-16 | 2019-05-16 |  |  |  |
| 88 | 2.3.2.5.3 | 咨询师信息列表 | manual | 1d | 2019-05-17 | 2019-05-17 |  |  |  |
| 89 | 2.3.2.5.4 | 预约咨询师 | manual | 1d | 2019-05-17 | 2019-05-17 |  |  |  |
| 90 | 2.3.2.5.5 | 与咨询师聊天 | manual | 1d | 2019-05-20 | 2019-05-20 |  |  |  |
| 91 | 2.3.2.5.6 | **管理员模块** |  | 2d | 2019-05-21 | 2019-05-22 |  |  |  |
| 92 | 2.3.2.5.6.1 | 审核信息 | manual | 1d | 2019-05-21 | 2019-05-21 |  |  |  |
| 93 | 2.3.2.5.6.2 | 活动发布 | manual | 1d | 2019-05-21 | 2019-05-21 |  |  |  |
| 94 | 2.3.2.5.6.3 | 分析用户登录 | manual | 1d | 2019-05-22 | 2019-05-22 |  |  |  |
| 95 | 2.3.3 | **项目监控** |  | 35d | 2019-04-08 | 2019-05-24 |  |  |  |
| 96 | 2.3.3.1 | 各项指标监控 | manual | 35d | 2019-04-08 | 2019-05-24 |  |  |  |
| 97 | 2.3.3.2 | 监控评审 | manual | 35d | 2019-04-08 | 2019-05-24 |  |  |  |
| 98 | 2.3.3.3 | 变更评审 | manual | 35d | 2019-04-08 | 2019-05-24 |  |  |  |
| 99 | 2.3.3.4 | 例会 | manual | 35d | 2019-04-08 | 2019-05-24 |  |  |  |
| 100 | 2.3.3.5 | **管理干系人** |  | 35d | 2019-04-08 | 2019-05-24 |  |  |  |
| 101 | 2.3.3.5.1 | 发布项目信息 | manual | 1d | 2019-04-08 | 2019-04-09 |  |  |  |
| 102 | 2.3.3.5.2 | 报告监控指标 | manual | 1d | 2019-04-08 | 2019-04-09 |  |  |  |
| 103 | 2.3.3.5.3 | 干系人沟通 | manual | 1d | 2019-04-08 | 2019-04-09 |  |  |  |
| 104 | 2.3.3.5.4 | **团队建设** |  | 1d? | 2009-11-16 | 2009-11-17 |  |  |  |
| 105 | 2.3.3.5.4.1 | 培训 | manual | 1d | 2009-11-16 | 2009-11-17 |  |  |  |
| 106 | 2.3.3.5.4.2 | 娱乐活动 | manual | 1d | 2009-11-16 | 2009-11-17 |  |  |  |
| 107 | 2.3.3.5.4.3 | 沟通 | manual | 1d | 2009-11-16 | 2009-11-17 |  |  |  |
| 108 | 2.3.4 | 采购 | manual | 3d | 2019-05-27 | 2019-05-29 |  |  |  |
| 109 | 2.3.5 | 项目验收 | manual | 2d | 2019-05-30 | 2019-05-31 |  |  |  |

| ID | WBS | Task | Type | Duration | Start | Finish |
| --- | --- | --- | --- | --- | --- | --- |
| 110 | 2.4 | **收尾** |  | 20d | 2019-06-03 | 2019-06-28 |
| 111 | 2.4.1 | 项目终验 | manual | 5d | 2019-06-03 | 2019-06-07 |
| 112 | 2.4.2 | 结束采购 | manual | 5d | 2019-06-10 | 2019-06-14 |
| 113 | 2.4.3 | 项目内部收尾 | manual | 5d | 2019-06-17 | 2019-06-21 |
